# 01-RefaccionariaNVW_WBS

Schedule from MS Project, 2016-05-02 to 2016-07-06, costs in $, A marks actual dates.

## Calendars

- Estándar: Mon-Fri 09:00-13:00, 15:00-19:00; Sat-Sun off.

## Resources

| Resource | Rate |
| --- | --- |
| Administrador de proyectos | 145.95 |
| Analista de datos | 111.5 |
| Diseñador | 114.21 |
| Programador | 94.68 |
| Tester | 109.44 |
| Asegurador de calidad | 104.12 |
| Administrador de configuración | 85.28 |
| cliente |  |

## Schedule

| ID | WBS | Task | Type | Duration | Start | Finish | Predecessors | Complete | Remaining | Total slack | Resources | Work | Actual work | Cost | Actual cost |
| --- | --- | --- | --- | --- | --- | --- | --- | --- | --- | --- | --- | --- | --- | --- | --- |
| 1 | 1 | **Plan preliminar** |  | 1.75d | 2016-05-02 09:00 A | 2016-05-03 17:00 A |  | 100% |  |  |  | 28h | 28h | 3,466.58 | 3,466.58 |
| 2 | 1.1 | Generar WBS del producto inicial |  | 4h | 2016-05-02 09:00 A | 2016-05-02 13:00 A |  | 100% |  |  | Administrador de proyectos; Analista de datos | 8h | 8h | 1,029.8 | 1,029.8 |
| 3 | 1.2 | Generar project charter |  | 1h | 2016-05-02 15:00 A | 2016-05-02 16:00 A | 2 | 100% |  |  | Administrador de proyectos; cliente | 2h | 2h | 145.95 | 145.95 |
| 4 | 1.3 | Plan preliminar del proyecto |  | 8h | 2016-05-02 16:00 A | 2016-05-03 16:00 A | 3 | 100% |  |  | Administrador de proyectos; Analista de datos | 16h | 16h | 2,059.6 | 2,059.6 |
| 5 | 1.4 | Matriz de comunicación |  | 1h | 2016-05-03 16:00 A | 2016-05-03 17:00 A | 4FS-1h | 100% |  |  | Administrador de proyectos; Administrador de configuración | 2h | 2h | 231.23 | 231.23 |
| 6 | 1.5 | Entrega de WBS del producto inicial, project charter, plan preliminar y matriz de comunicación | milestone | 0d | 2016-05-02 09:00 A | 2016-05-02 09:00 A |  | 100% |  |  |  |  |  |  |  |
| 7 | 2 | **Nombre del proyecto** |  | 45.75d | 2016-05-03 17:00 A | 2016-07-06 13:00 | 1 | 94% | 2.69d | 0d |  | 470h | 431h | 52,527.78 | 48,443.48 |
| 8 | 2.1 | Formación del equipo |  | 1h | 2016-05-03 17:00 | 2016-05-03 18:00 | 5 |  |  | 45.62d | Administrador de proyectos | 1h |  | 145.95 |  |
| 9 | 2.2 | **Iteración 1** |  | 26.31d | 2016-05-03 18:00 A | 2016-06-09 10:30 A |  | 100% |  |  |  | 257h | 257h | 28,886.76 | 28,886.76 |
| 10 | 2.2.1 | **Análisis** |  | 4.69d | 2016-05-03 18:00 A | 2016-05-10 15:30 A |  | 100% |  |  |  | 66.5h | 66.5h | 8,482.7 | 8,482.7 |
| 11 | 2.2.1.1 | **Elicitación** |  | 3.12d | 2016-05-03 18:00 A | 2016-05-06 19:00 A |  | 100% |  |  |  | 48.5h | 48.5h | 6,269 | 6,269 |
| 12 | 2.2.1.1.1 | Generar lista de proveedores de requerimientos |  | 2h | 2016-05-03 18:00 A | 2016-05-04 10:00 A | 8 | 100% |  |  | Administrador de proyectos; Analista de datos | 4h | 4h | 514.9 | 514.9 |
| 13 | 2.2.1.1.2 | Evaluar los proveedores de requerimientos |  | 1h | 2016-05-04 10:00 A | 2016-05-04 11:00 A | 12 | 100% |  |  | Administrador de proyectos; Analista de datos | 2h | 2h | 257.45 | 257.45 |
| 14 | 2.2.1.1.3 | Definir estrategia de recolección de datos |  | 0.5h | 2016-05-04 11:00 A | 2016-05-04 11:30 A | 13 | 100% |  |  | Administrador de proyectos; Analista de datos | 1h | 1h | 128.72 | 128.72 |
| 15 | 2.2.1.1.4 | Planificación de reuniones de licitación |  | 1.5h | 2016-05-04 11:30 A | 2016-05-04 13:00 A | 14 | 100% |  |  | Administrador de proyectos | 1.5h | 1.5h | 218.93 | 218.93 |
| 16 | 2.2.1.1.5 | Identificar procesos del sistema |  | 8h | 2016-05-04 15:00 A | 2016-05-05 13:00 A | 15 | 100% |  |  | Administrador de proyectos; Analista de datos | 16h | 16h | 2,059.6 | 2,059.6 |
| 17 | 2.2.1.1.6 | Identificar requerimientos funcionales |  | 8h | 2016-05-05 15:00 A | 2016-05-06 13:00 A | 16 | 100% |  |  | Administrador de proyectos; Analista de datos | 16h | 16h | 2,059.6 | 2,059.6 |
| 18 | 2.2.1.1.7 | Identificar requerimientos no funcionales |  | 4h | 2016-05-06 15:00 A | 2016-05-06 19:00 A | 17 | 100% |  |  | Administrador de proyectos; Analista de datos | 8h | 8h | 1,029.8 | 1,029.8 |
| 19 | 2.2.1.2 | **Especificación** |  | 1d | 2016-05-09 09:00 A | 2016-05-09 19:00 A | 11 | 100% |  |  |  | 10h | 10h | 1,183.9 | 1,183.9 |
| 20 | 2.2.1.2.1 | Evaluación de requerimientos |  | 2h | 2016-05-09 09:00 A | 2016-05-09 11:00 A | 18FS-4h | 100% |  |  | Administrador de proyectos; Analista de datos | 4h | 4h | 514.9 | 514.9 |
| 21 | 2.2.1.2.2 | SRS |  | 6h | 2016-05-09 11:00 A | 2016-05-09 19:00 A | 20 | 100% |  |  | Analista de datos | 6h | 6h | 669 | 669 |
| 22 | 2.2.1.3 | **Gestión de requerimientos** |  | 0.56d | 2016-05-09 19:00 A | 2016-05-10 15:30 A | 19 | 100% |  |  |  | 8h | 8h | 1,029.8 | 1,029.8 |
| 23 | 2.2.1.3.1 | Priorizar los requerimientos |  | 2h | 2016-05-10 09:00 A | 2016-05-10 11:00 A | 21FS-2h | 100% |  |  | Administrador de proyectos; Analista de datos | 4h | 4h | 514.9 | 514.9 |
| 24 | 2.2.1.3.2 | Almacenar en repositorio |  | 0.5h | 2016-05-10 11:00 A | 2016-05-10 11:30 A | 23 | 100% |  |  | Analista de datos | 0.5h | 0.5h | 55.75 | 55.75 |
| 25 | 2.2.1.3.3 | Asignar a desarrolladores de software |  | 1h | 2016-05-10 11:30 A | 2016-05-10 12:30 A | 24 | 100% |  |  | Administrador de proyectos; Analista de datos | 2h | 2h | 257.45 | 257.45 |
| 26 | 2.2.1.3.4 | Administración de cambios de requerimientos |  | 0.5h | 2016-05-10 12:30 A | 2016-05-10 13:00 A | 25 | 100% |  |  | Administrador de proyectos | 0.5h | 0.5h | 72.98 | 72.98 |
| 27 | 2.2.1.3.5 | Administración de la trazabilidad de requerimientos |  | 0.5h | 2016-05-10 15:00 A | 2016-05-10 15:30 A | 26 | 100% |  |  | Administrador de proyectos; Analista de datos | 1h | 1h | 128.72 | 128.72 |
| 28 | 2.2.1.3.6 | Entrega de lista de proveedores de requerimientos, procesos del sistema y SRS | milestone | 0d | 2016-05-09 19:00 A | 2016-05-09 19:00 A |  | 100% |  |  |  |  |  |  |  |

Notes:
- 2: Descripción: Definir todas las actividades que se van a relizar en el proyecto, principio, fin, costos, recursos, etc.
- 3: Descripción: Acta de constitución del proyecto donde el cliente se compromete con la información
- 4: Descripción: Se comienza a realizar la forma en que se elaborará el proyecto
- 5: Descripción: Se establece el documento que nos ayudará a establecer la comunicación con el equipo
- 8: Descripción: Se forma el equipo de acuerdo a las habilidades de los integrantes
- 12: Descripción: Se establecen los proveedores de requerimientos, de donde obtendremos la información
- 13: Descripción: Se valoran cuales porveedores de requerimientos serán lo adecuados para nuestro proyecto
- 14: Descripción: Se define como se recolectaran los datos
- 15: Descripción: Se especifican los tiempos en que se realizaran las reuniones
- 16: Descripción: Se identifica con que procesos contará nuestro sistema
- 17: Descripción: Se identifican los requerimientos funcionales que nos servirán para la aplicación
- 18: Descripción: Se identifican los requerimientos no funcionales indispensables para nuestro sistema
- 20: Descripción: Se evalúan los requerimientos obtenidos
- 21: Descripción: Se documentan los requerimientos que se usarán
- 23: Descripción: Se jerarquizan los requerimientos viendo cuales son más importantes de cumplir
- 24: Descripción: Se respalda todo lo realizado en un repositorio para que la información se encuentre a la mano
- 25: Descripción: Se asignan encargados a las tareas
- 26: Descripción: Se comienza con el documento que gestionará los cambios que se puedan hacer a los requerimientos
- 27: Descripción: Se lleva un control de los requerimientos

| ID | WBS | Task | Type | Duration | Start | Finish | Predecessors | Complete | Resources | Work | Actual work | Cost | Actual cost |
| --- | --- | --- | --- | --- | --- | --- | --- | --- | --- | --- | --- | --- | --- |
| 29 | 2.2.2 | **Planificación** |  | 3.12d | 2016-05-10 15:30 A | 2016-05-13 16:30 A | 10 | 100% |  | 42.5h | 42.5h | 5,258.05 | 5,258.05 |
| 30 | 2.2.2.1 | Definición del ciclo de vida |  | 0.5h | 2016-05-10 15:30 A | 2016-05-10 16:00 A | 27 | 100% | Administrador de proyectos; Analista de datos | 1h | 1h | 128.72 | 128.72 |
| 31 | 2.2.2.2 | Definición de políticas |  | 0.5h | 2016-05-10 16:00 A | 2016-05-10 16:30 A | 30 | 100% | Administrador de proyectos | 0.5h | 0.5h | 72.98 | 72.98 |
| 32 | 2.2.2.3 | Actualizar plan de proyecto |  | 2h | 2016-05-10 16:30 A | 2016-05-10 18:30 A | 31 | 100% | Administrador de proyectos | 2h | 2h | 291.9 | 291.9 |
| 33 | 2.2.2.4 | Actualizar matriz de comunicación |  | 1h | 2016-05-10 18:30 A | 2016-05-11 09:30 A | 32 | 100% | Administrador de proyectos | 1h | 1h | 145.95 | 145.95 |
| 34 | 2.2.2.5 | **Estimación** |  | 0.75d | 2016-05-11 09:30 A | 2016-05-11 17:30 A |  | 100% |  | 7h | 7h | 814.95 | 814.95 |
| 35 | 2.2.2.5.1 | Actualizar WBS/calendario |  | 1h | 2016-05-11 09:30 A | 2016-05-11 10:30 A | 33 | 100% | Analista de datos | 1h | 1h | 111.5 | 111.5 |
| 36 | 2.2.2.5.2 | Diccionario del WBS |  | 4h | 2016-05-11 10:30 A | 2016-05-11 16:30 A | 35 | 100% | Analista de datos | 4h | 4h | 446 | 446 |
| 37 | 2.2.2.5.3 | Costos |  | 1h | 2016-05-11 16:30 A | 2016-05-11 17:30 A | 36 | 100% | Administrador de proyectos; Analista de datos | 2h | 2h | 257.45 | 257.45 |
| 38 | 2.2.2.6 | **Riesgos** |  | 1.5d | 2016-05-11 17:30 A | 2016-05-13 11:30 A | 34 | 100% |  | 24h | 24h | 3,089.4 | 3,089.4 |
| 39 | 2.2.2.6.1 | Identificación de riesgos |  | 6h | 2016-05-11 17:30 A | 2016-05-12 15:30 A | 37 | 100% | Administrador de proyectos; Analista de datos | 12h | 12h | 1,544.7 | 1,544.7 |
| 40 | 2.2.2.6.2 | Asignación de prioridades |  | 2h | 2016-05-12 15:30 A | 2016-05-12 17:30 A | 39 | 100% | Administrador de proyectos; Analista de datos | 4h | 4h | 514.9 | 514.9 |
| 41 | 2.2.2.6.3 | Plan de mitigación y contingencia |  | 4h | 2016-05-12 17:30 A | 2016-05-13 11:30 A | 40 | 100% | Administrador de proyectos; Analista de datos | 8h | 8h | 1,029.8 | 1,029.8 |
| 42 | 2.2.2.7 | **Aseguramiento de la calidad** |  | 0.38d | 2016-05-13 11:30 A | 2016-05-13 16:30 A | 38 | 100% |  | 7h | 7h | 714.15 | 714.15 |
| 43 | 2.2.2.7.1 | Plan de gestión de la configuración |  | 2h | 2016-05-13 11:30 A | 2016-05-13 15:30 A | 41 | 100% | Administrador de configuración; Asegurador de calidad | 4h | 4h | 378.8 | 378.8 |
| 44 | 2.2.2.7.2 | Junta de arranque de construcción |  | 1h | 2016-05-13 15:30 A | 2016-05-13 16:30 A | 43 | 100% | Administrador de configuración; Administrador de proyectos; Asegurador de calidad | 3h | 3h | 335.35 | 335.35 |
| 45 | 2.2.2.7.3 | Entrega de ciclo de vida a utilizar, políticas,plan del proyecto, matriz de comunicación, diccionario del WBS, riesgos, prioridades de los riesgos, plan de mitigación y contingencia, plan de gestión de la configuración y junta de arranque de construcción. | milestone | 0d | 2016-05-13 11:30 A | 2016-05-13 11:30 A |  | 100% |  |  |  |  |  |
| 46 | 2.2.3 | **Diseño** |  | 2.75d | 2016-05-13 15:30 A | 2016-05-18 11:30 A | 29FS-1h | 100% |  | 21h | 21h | 2,398.41 | 2,398.41 |
| 47 | 2.2.3.1 | Definición de la arquitectura |  | 2h | 2016-05-13 16:30 A | 2016-05-13 18:30 A | 44 | 100% | Diseñador | 2h | 2h | 228.42 | 228.42 |
| 48 | 2.2.3.2 | Diagramas de caso de uso |  | 4h | 2016-05-13 18:30 A | 2016-05-16 12:30 A | 47 | 100% | Diseñador | 4h | 4h | 456.84 | 456.84 |
| 49 | 2.2.3.3 | Diagramas de secuencia |  | 2h | 2016-05-16 12:30 A | 2016-05-16 16:30 A | 48 | 100% | Diseñador | 2h | 2h | 228.42 | 228.42 |
| 50 | 2.2.3.4 | Diagramas de clases |  | 1h | 2016-05-16 16:30 A | 2016-05-16 17:30 A | 49 | 100% | Diseñador | 1h | 1h | 114.21 | 114.21 |
| 51 | 2.2.3.5 | Diagramas de componentes |  | 1h | 2016-05-16 17:30 A | 2016-05-16 18:30 A | 50 | 100% | Diseñador | 1h | 1h | 114.21 | 114.21 |
| 52 | 2.2.3.6 | Diagramas de despliegues |  | 2h | 2016-05-16 18:30 A | 2016-05-17 10:30 A | 51 | 100% | Diseñador | 2h | 2h | 228.42 | 228.42 |
| 53 | 2.2.3.7 | Mapa de navegación |  | 1h | 2016-05-17 10:30 A | 2016-05-17 11:30 A | 52 | 100% | Diseñador | 1h | 1h | 114.21 | 114.21 |
| 54 | 2.2.3.8 | Maquetación |  | 6h | 2016-05-17 11:30 A | 2016-05-18 09:30 A | 53 | 100% | Diseñador | 6h | 6h | 685.26 | 685.26 |

Notes:
- 30: Descripción: Se define el ciclo de vida a utilizar
- 31: Descripción: Se definen las politicas que habrá dentro del ambiente laboral de la realización del proyecto
- 32: Descripción: Se actualiza el plan del proyecto
- 33: Descripción: Se comienza con la redacción de la matriz de comunicación
- 35: Descripción: Se actualiza el WBS
- 36: Descripción: Se redacta el diccionario del WBS
- 37: Descripción: Se establecen los costos que tendrá el proyecto
- 39: Descripción: Se identifican los posibles riesgos del proyecto
- 40: Descripción: Se priorizan los riesgos
- 41: Descripción: Se elabora un plan de mitigación y contingencia
- 43: Descripción: Se elabora el plan de gestión de configuración, aquí es donde comienza a interactuar el administrador de la configuración
- 44: Descripción: Se revisa que se tengan los productos necesarios para poder arrancar el sistema
- 47: Descripción: Se diseña la arquitectura de nuestra aplicación
- 48: Descripción: Se realizan los diagramas de casos de uso
- 49: Descripción: Se realizan los diagramas de secuencia
- 50: Descripción: Se realizan los diagramas de clases
- 51: Descripción: Se realizan los diagramas de componentes
- 52: Descripción: Se realizan los diagramas de despliegues
- 53: Descripción: Se realiza el mapa de navegación
- 54: Descripción: Se comienza conla maquetación de la aplicación

| ID | WBS | Task | Type | Duration | Start | Finish | Predecessors | Complete | Resources | Work | Actual work | Cost | Actual cost |
| --- | --- | --- | --- | --- | --- | --- | --- | --- | --- | --- | --- | --- | --- |
| 55 | 2.2.3.9 | **Diseño de diagramas de la base de datos** |  | 2.75d | 2016-05-13 15:30 A | 2016-05-18 11:30 A |  | 100% |  | 2h | 2h | 228.42 | 228.42 |
| 56 | 2.2.3.9.1 | Diagrama E-R |  | 1h | 2016-05-18 09:30 A | 2016-05-18 10:30 A | 54 | 100% | Diseñador | 1h | 1h | 114.21 | 114.21 |
| 57 | 2.2.3.9.2 | Diagrama relacional |  | 1h | 2016-05-18 10:30 A | 2016-05-18 11:30 A | 56 | 100% | Diseñador | 1h | 1h | 114.21 | 114.21 |
| 58 | 2.2.3.9.3 | Entrega de la arquitectura del sistema, casos de uso, secuencia, clases, componentes, despliegues, mapa de navegación y maquetación. | milestone | 0d | 2016-05-13 15:30 A | 2016-05-13 15:30 A |  | 100% |  |  |  |  |  |
| 59 | 2.2.4 | **Codificación** |  | 9.75d | 2016-05-18 11:30 A | 2016-06-01 09:30 A | 46 | 100% |  | 78h | 78h | 7,385.04 | 7,385.04 |
| 60 | 2.2.4.1 | Codificación de la base de datos |  | 3h | 2016-05-18 11:30 A | 2016-05-18 16:30 A | 57 | 100% | Programador | 3h | 3h | 284.04 | 284.04 |
| 61 | 2.2.4.2 | **Módulo clientes** |  | 1.56d | 2016-05-18 16:30 A | 2016-05-20 11:00 A |  | 100% |  | 12.5h | 12.5h | 1,183.5 | 1,183.5 |
| 62 | 2.2.4.2.1 | Interfaz |  | 1h | 2016-05-18 16:30 A | 2016-05-18 17:30 A | 60 | 100% | Programador | 1h | 1h | 94.68 | 94.68 |
| 63 | 2.2.4.2.2 | Clases de clientes |  | 6h | 2016-05-18 17:30 A | 2016-05-19 15:30 A | 62 | 100% | Programador | 6h | 6h | 568.08 | 568.08 |
| 64 | 2.2.4.2.3 | Conexión a BD |  | 0.5h | 2016-05-19 15:30 A | 2016-05-19 16:00 A | 63 | 100% | Programador | 0.5h | 0.5h | 47.34 | 47.34 |
| 65 | 2.2.4.2.4 | Alta de clientes |  | 0.5h | 2016-05-19 16:00 A | 2016-05-19 16:30 A | 64 | 100% | Programador | 0.5h | 0.5h | 47.34 | 47.34 |
| 66 | 2.2.4.2.5 | Baja de clientes |  | 0.5h | 2016-05-19 16:30 A | 2016-05-19 17:00 A | 65 | 100% | Programador | 0.5h | 0.5h | 47.34 | 47.34 |
| 67 | 2.2.4.2.6 | Actualización de clientes |  | 1h | 2016-05-19 17:00 A | 2016-05-19 18:00 A | 66 | 100% | Programador | 1h | 1h | 94.68 | 94.68 |
| 68 | 2.2.4.2.7 | Consultas de clientes |  | 1h | 2016-05-19 18:00 A | 2016-05-19 19:00 A | 67 | 100% | Programador | 1h | 1h | 94.68 | 94.68 |
| 69 | 2.2.4.2.8 | Reportes de clientes |  | 2h | 2016-05-20 09:00 A | 2016-05-20 11:00 A | 68 | 100% | Programador | 2h | 2h | 189.36 | 189.36 |
| 70 | 2.2.4.3 | **Módulo productos** |  | 2.19d | 2016-05-20 11:00 A | 2016-05-24 12:30 A | 61 | 100% |  | 17.5h | 17.5h | 1,656.9 | 1,656.9 |
| 71 | 2.2.4.3.1 | Interfaz |  | 1.5h | 2016-05-20 11:00 A | 2016-05-20 12:30 A | 69 | 100% | Programador | 1.5h | 1.5h | 142.02 | 142.02 |
| 72 | 2.2.4.3.2 | Clases de productos |  | 8h | 2016-05-20 12:30 A | 2016-05-23 12:30 A | 71 | 100% | Programador | 8h | 8h | 757.44 | 757.44 |
| 73 | 2.2.4.3.3 | Conexión a BD |  | 0.5h | 2016-05-23 12:30 A | 2016-05-23 13:00 A | 72 | 100% | Programador | 0.5h | 0.5h | 47.34 | 47.34 |
| 74 | 2.2.4.3.4 | Alta de productos |  | 1h | 2016-05-23 15:00 A | 2016-05-23 16:00 A | 73 | 100% | Programador | 1h | 1h | 94.68 | 94.68 |
| 75 | 2.2.4.3.5 | Baja de productos |  | 1h | 2016-05-23 16:00 A | 2016-05-23 17:00 A | 74 | 100% | Programador | 1h | 1h | 94.68 | 94.68 |
| 76 | 2.2.4.3.6 | Actualización de productos |  | 1.5h | 2016-05-23 17:00 A | 2016-05-23 18:30 A | 75 | 100% | Programador | 1.5h | 1.5h | 142.02 | 142.02 |
| 77 | 2.2.4.3.7 | Consultas de productos |  | 1.5h | 2016-05-23 18:30 A | 2016-05-24 10:00 A | 76 | 100% | Programador | 1.5h | 1.5h | 142.02 | 142.02 |
| 78 | 2.2.4.3.8 | Reportes de productos |  | 2.5h | 2016-05-24 10:00 A | 2016-05-24 12:30 A | 77 | 100% | Programador | 2.5h | 2.5h | 236.7 | 236.7 |

Notes:
- 56: Descripción: Se realiza el diseño de modelo de entidad relación
- 57: Descripción: Se realiza el modelo relacional
- 60: Descripción: Se comienza a codificar la base de datos
- 62: Descripción: Se realiza la interfaz del módulo de clientes
- 63: Descripción: Se realizan las clases de los clientes
- 64: Descripción: Se realiza la conexión a la base de datos
- 65: Descripción: Se realiza la codificación del alta de clientes
- 66: Descripción: Se realiza la codificación de la baja de clientes
- 67: Descripción: Se realiza la codificación de la actualización de la tabla clientes
- 68: Descripción: Se realizan las consultas correspondientes a la tabla clientes
- 69: Descripción: Se realiza el reporte de la tabla clientes
- 71: Descripción: Se realiza la interfaz del módulo de productos
- 72: Descripción: Se realizan las clases de los productos
- 73: Descripción: Se realiza la conexión a la base de datos
- 74: Descripción: Se realiza la codificación del alta de productos
- 75: Descripción: Se realiza la codificación de la baja de productos
- 76: Descripción: Se realiza la codificación de la actualización de la tabla productos
- 77: Descripción: Se realizan las consultas correspondientes a la tabla productos
- 78: Descripción: Se realiza el reporte de la tabla productos

| ID | WBS | Task | Duration | Start | Finish | Predecessors | Complete | Resources | Work | Actual work | Cost | Actual cost |
| --- | --- | --- | --- | --- | --- | --- | --- | --- | --- | --- | --- | --- |
| 79 | 2.2.4.4 | **Módulo ventas** | 1.56d | 2016-05-24 12:30 A | 2016-05-25 19:00 A | 70 | 100% |  | 12.5h | 12.5h | 1,183.5 | 1,183.5 |
| 80 | 2.2.4.4.1 | Interfaz | 1h | 2016-05-24 12:30 A | 2016-05-24 15:30 A | 78 | 100% | Programador | 1h | 1h | 94.68 | 94.68 |
| 81 | 2.2.4.4.2 | Clases de ventas | 6h | 2016-05-24 15:30 A | 2016-05-25 11:30 A | 80 | 100% | Programador | 6h | 6h | 568.08 | 568.08 |
| 82 | 2.2.4.4.3 | Conexión a BD | 0.5h | 2016-05-25 11:30 A | 2016-05-25 12:00 A | 81 | 100% | Programador | 0.5h | 0.5h | 47.34 | 47.34 |
| 83 | 2.2.4.4.4 | Alta de ventas | 0.5h | 2016-05-25 12:00 A | 2016-05-25 12:30 A | 82 | 100% | Programador | 0.5h | 0.5h | 47.34 | 47.34 |
| 84 | 2.2.4.4.5 | Baja de ventas | 0.5h | 2016-05-25 12:30 A | 2016-05-25 13:00 A | 83 | 100% | Programador | 0.5h | 0.5h | 47.34 | 47.34 |
| 85 | 2.2.4.4.6 | Actualización de ventas | 1h | 2016-05-25 15:00 A | 2016-05-25 16:00 A | 84 | 100% | Programador | 1h | 1h | 94.68 | 94.68 |
| 86 | 2.2.4.4.7 | Consultas de ventas | 1h | 2016-05-25 16:00 A | 2016-05-25 17:00 A | 85 | 100% | Programador | 1h | 1h | 94.68 | 94.68 |
| 87 | 2.2.4.4.8 | Reportes de ventas | 2h | 2016-05-25 17:00 A | 2016-05-25 19:00 A | 86 | 100% | Programador | 2h | 2h | 189.36 | 189.36 |
| 88 | 2.2.4.5 | **Módulo categoría** | 1.44d | 2016-05-26 09:00 A | 2016-05-27 12:30 A | 79 | 100% |  | 11.5h | 11.5h | 1,088.82 | 1,088.82 |
| 89 | 2.2.4.5.1 | Interfaz | 1h | 2016-05-26 09:00 A | 2016-05-26 10:00 A | 87 | 100% | Programador | 1h | 1h | 94.68 | 94.68 |
| 90 | 2.2.4.5.2 | Clases de categoría | 5h | 2016-05-26 10:00 A | 2016-05-26 17:00 A | 89 | 100% | Programador | 5h | 5h | 473.4 | 473.4 |
| 91 | 2.2.4.5.3 | Conexión a BD | 0.5h | 2016-05-26 17:00 A | 2016-05-26 17:30 A | 90 | 100% | Programador | 0.5h | 0.5h | 47.34 | 47.34 |
| 92 | 2.2.4.5.4 | Alta de categoría | 0.5h | 2016-05-26 17:30 A | 2016-05-26 18:00 A | 91 | 100% | Programador | 0.5h | 0.5h | 47.34 | 47.34 |
| 93 | 2.2.4.5.5 | Baja de categoría | 0.5h | 2016-05-26 18:00 A | 2016-05-26 18:30 A | 92 | 100% | Programador | 0.5h | 0.5h | 47.34 | 47.34 |
| 94 | 2.2.4.5.6 | Actualización de categoría | 1h | 2016-05-26 18:30 A | 2016-05-27 09:30 A | 93 | 100% | Programador | 1h | 1h | 94.68 | 94.68 |
| 95 | 2.2.4.5.7 | Consultas de categoría | 1h | 2016-05-27 09:30 A | 2016-05-27 10:30 A | 94 | 100% | Programador | 1h | 1h | 94.68 | 94.68 |
| 96 | 2.2.4.5.8 | Reportes de categoría | 2h | 2016-05-27 10:30 A | 2016-05-27 12:30 A | 95 | 100% | Programador | 2h | 2h | 189.36 | 189.36 |
| 97 | 2.2.4.6 | **Módulo de provedores** | 2.19d | 2016-05-27 12:30 A | 2016-05-31 16:00 A | 88 | 100% |  | 17.5h | 17.5h | 1,656.9 | 1,656.9 |
| 98 | 2.2.4.6.1 | Interfaz | 1.5h | 2016-05-27 12:30 A | 2016-05-27 16:00 A | 96 | 100% | Programador | 1.5h | 1.5h | 142.02 | 142.02 |
| 99 | 2.2.4.6.2 | Clases de proveedores | 8h | 2016-05-27 16:00 A | 2016-05-30 16:00 A | 98 | 100% | Programador | 8h | 8h | 757.44 | 757.44 |
| 100 | 2.2.4.6.3 | Conexión a BD | 0.5h | 2016-05-30 16:00 A | 2016-05-30 16:30 A | 99 | 100% | Programador | 0.5h | 0.5h | 47.34 | 47.34 |
| 101 | 2.2.4.6.4 | Alta de proveedores | 1h | 2016-05-30 16:30 A | 2016-05-30 17:30 A | 100 | 100% | Programador | 1h | 1h | 94.68 | 94.68 |
| 102 | 2.2.4.6.5 | Baja de proveedores | 1h | 2016-05-30 17:30 A | 2016-05-30 18:30 A | 101 | 100% | Programador | 1h | 1h | 94.68 | 94.68 |
| 103 | 2.2.4.6.6 | Actualización de proveedores | 1.5h | 2016-05-30 18:30 A | 2016-05-31 10:00 A | 102 | 100% | Programador | 1.5h | 1.5h | 142.02 | 142.02 |
| 104 | 2.2.4.6.7 | Consultas de proveedores | 1.5h | 2016-05-31 10:00 A | 2016-05-31 11:30 A | 103 | 100% | Programador | 1.5h | 1.5h | 142.02 | 142.02 |
| 105 | 2.2.4.6.8 | Reportes de proveedores | 2.5h | 2016-05-31 11:30 A | 2016-05-31 16:00 A | 104 | 100% | Programador | 2.5h | 2.5h | 236.7 | 236.7 |

Notes:
- 80: Descripción: Se realiza la interfaz del módulo de ventas
- 81: Descripción: Se realizan las clases de los ventas
- 82: Descripción: Se realiza la conexión a la base de datos
- 83: Descripción: Se realiza la codificación del alta de ventas
- 84: Descripción: Se realiza la codificación de la baja de ventas
- 85: Descripción: Se realiza la codificación de la actualización de la tabla ventas
- 86: Descripción: Se realizan las consultas correspondientes a la tabla ventas
- 87: Descripción: Se realiza el reporte de la tabla ventas
- 89: Descripción: Se realiza la interfaz del módulo de categoría
- 90: Descripción: Se realizan las clases de la tabla categoría
- 91: Descripción: Se realiza la conexión a la base de datos
- 92: Descripción: Se realiza la codificación del alta de categoría
- 93: Descripción: Se realiza la codificación de la baja de categoría
- 94: Descripción: Se realiza la codificación de la actualización de la tabla categoría
- 95: Descripción: Se realizan las consultas correspondientes a la tabla categoría
- 96: Descripción: Se realiza el reporte de la tabla categoría
- 98: Descripción: Se realiza la interfaz del módulo de proveedores
- 99: Descripción: Se realizan las clases de la tabla proveedores
- 100: Descripción: Se realiza la conexión a la base de datos
- 101: Descripción: Se realiza la codificación del alta de proveedores
- 102: Descripción: Se realiza la codificación de la baja de proveedores
- 103: Descripción: Se realiza la codificación de la actualización de la tabla proveedores
- 104: Descripción: Se realizan las consultas correspondientes a la tabla proveedores
- 105: Descripción: Se realiza el reporte de la tabla proveedores

| ID | WBS | Task | Type | Duration | Start | Finish | Predecessors | Complete | Resources | Work | Actual work | Cost | Actual cost |
| --- | --- | --- | --- | --- | --- | --- | --- | --- | --- | --- | --- | --- | --- |
| 106 | 2.2.4.7 | **Login** |  | 0.44d | 2016-05-31 16:00 A | 2016-06-01 09:30 A | 97 | 100% |  | 3.5h | 3.5h | 331.38 | 331.38 |
| 107 | 2.2.4.7.1 | Interfaz |  | 0.5h | 2016-05-31 16:00 A | 2016-05-31 16:30 A | 105 | 100% | Programador | 0.5h | 0.5h | 47.34 | 47.34 |
| 108 | 2.2.4.7.2 | Validación |  | 3h | 2016-05-31 16:30 A | 2016-06-01 09:30 A | 107 | 100% | Programador | 3h | 3h | 284.04 | 284.04 |
| 109 | 2.2.4.8 | Entrega de base de datos, reporte de módulo clientes, productos, ventas, categoría, proveedores y login. | milestone | 0d | 2016-05-18 11:30 A | 2016-05-18 11:30 A |  | 100% |  |  |  |  |  |
| 110 | 2.2.5 | **Pruebas** |  | 6.12d | 2016-06-01 09:30 A | 2016-06-09 10:30 A | 59 | 100% |  | 49h | 49h | 5,362.56 | 5,362.56 |
| 111 | 2.2.5.1 | **Pruebas de caja blanca** |  | 6.12d | 2016-06-01 09:30 A | 2016-06-09 10:30 A |  | 100% |  | 49h | 49h | 5,362.56 | 5,362.56 |
| 112 | 2.2.5.1.1 | **Módulo de clientes** |  | 1d | 2016-06-01 09:30 A | 2016-06-02 09:30 A |  | 100% |  | 8h | 8h | 875.52 | 875.52 |
| 113 | 2.2.5.1.1.1 | Puebas unitarias |  | 4h | 2016-06-01 09:30 A | 2016-06-01 15:30 A | 108 | 100% | Tester | 4h | 4h | 437.76 | 437.76 |
| 114 | 2.2.5.1.1.2 | Pruebas de módulo |  | 4h | 2016-06-01 15:30 A | 2016-06-02 09:30 A | 113 | 100% | Tester | 4h | 4h | 437.76 | 437.76 |
| 115 | 2.2.5.1.2 | **Módulo de productos** |  | 0.88d | 2016-06-02 09:30 A | 2016-06-02 18:30 A | 112 | 100% |  | 7h | 7h | 766.08 | 766.08 |
| 116 | 2.2.5.1.2.1 | Pruebas de desempeño |  | 4h | 2016-06-02 09:30 A | 2016-06-02 15:30 A | 114 | 100% | Tester | 4h | 4h | 437.76 | 437.76 |
| 117 | 2.2.5.1.2.2 | Pruebas de regresion |  | 3h | 2016-06-02 15:30 A | 2016-06-02 18:30 A | 116 | 100% | Tester | 3h | 3h | 328.32 | 328.32 |
| 118 | 2.2.5.1.3 | **Módulo ventas** |  | 0.5d | 2016-06-02 18:30 A | 2016-06-03 12:30 A | 115 | 100% |  | 4h | 4h | 437.76 | 437.76 |
| 119 | 2.2.5.1.3.1 | Pruebas de módulo |  | 4h | 2016-06-02 18:30 A | 2016-06-03 12:30 A | 117 | 100% | Tester | 4h | 4h | 437.76 | 437.76 |
| 120 | 2.2.5.1.4 | **Módulo categoría** |  | 0.5d | 2016-06-03 12:30 A | 2016-06-03 18:30 A | 118 | 100% |  | 4h | 4h | 437.76 | 437.76 |
| 121 | 2.2.5.1.4.1 | Pruebas de desempeño |  | 4h | 2016-06-03 12:30 A | 2016-06-03 18:30 A | 119 | 100% | Tester | 4h | 4h | 437.76 | 437.76 |
| 122 | 2.2.5.1.5 | **Módulo proveedores** |  | 1d | 2016-06-03 18:30 A | 2016-06-06 18:30 A | 120 | 100% |  | 8h | 8h | 875.52 | 875.52 |
| 123 | 2.2.5.1.5.1 | Pruebas unitarias |  | 4h | 2016-06-03 18:30 A | 2016-06-06 12:30 A | 121 | 100% | Tester | 4h | 4h | 437.76 | 437.76 |
| 124 | 2.2.5.1.5.2 | Pruebas de desempeño |  | 4h | 2016-06-06 12:30 A | 2016-06-06 18:30 A | 123 | 100% | Tester | 4h | 4h | 437.76 | 437.76 |
| 125 | 2.2.5.1.6 | **Login** |  | 1.25d | 2016-06-06 18:30 A | 2016-06-08 10:30 A | 122 | 100% |  | 10h | 10h | 1,094.4 | 1,094.4 |
| 126 | 2.2.5.1.6.1 | Pruebas de stress |  | 4h | 2016-06-06 18:30 A | 2016-06-07 12:30 A | 124 | 100% | Tester | 4h | 4h | 437.76 | 437.76 |
| 127 | 2.2.5.1.6.2 | Pruebas de carga |  | 6h | 2016-06-07 12:30 A | 2016-06-08 10:30 A | 126 | 100% | Tester | 6h | 6h | 656.64 | 656.64 |
| 128 | 2.2.5.1.7 | Pruebas del sistema |  | 8h | 2016-06-08 10:30 A | 2016-06-09 10:30 A | 127 | 100% | Tester | 8h | 8h | 875.52 | 875.52 |
| 129 | 2.2.5.1.8 | Entrega de resultados de pruebas de módulo de clientes, productos, ventas, categoría, proveedores y login. | milestone | 0d | 2016-06-01 09:30 A | 2016-06-01 09:30 A |  | 100% |  |  |  |  |  |

Notes:
- 107: Descripción: Se realiza la interfaz del login
- 108: Descripción: Se validan los campos de los formularios del login
- 113: Descripción: Se reliazan las pruebas unitarias al módulo clientes
- 114: Descripción: Se realizan las pruebas de módulo a la tabla clientes
- 116: Descripción: Se realizan las pruebas de desempeño al módulo productos
- 117: Descripción: Se realizan las pruebas de regresión al módulo productos
- 119: Descripción: Se realizan las pruebas de módulo a la tabla ventas
- 121: Descripción: Se realizan las pruebas de desempeño al módulo de categoría
- 123: Descripción: Se realizan las pruebas unitarias al módulo de proveedores
- 124: Descripción: Se realizan las pruebas de desempeño al módulo de proveedores
- 126: Descripción: Se realizan las pruebas de stress a login
- 127: Descripción: Se realizan las pruebas de carga a login
- 128: Descripción: Se realizan las pruebas de sistemas a los m{odulos anteriores en conjunto

| ID | WBS | Task | Type | Duration | Start | Finish | Predecessors | Complete | Resources | Work | Actual work | Cost | Actual cost |
| --- | --- | --- | --- | --- | --- | --- | --- | --- | --- | --- | --- | --- | --- |
| 130 | 2.3 | **Iteración 2** |  | 16.06d | 2016-06-09 10:30 A | 2016-07-01 11:00 A | 9 | 100% |  | 166h | 166h | 18,799.28 | 18,799.28 |
| 131 | 2.3.1 | **Análisis** |  | 2.56d | 2016-06-09 10:30 A | 2016-06-13 17:00 A |  | 100% |  | 47.5h | 47.5h | 6,123.05 | 6,123.05 |
| 132 | 2.3.1.1 | **Elicitación** |  | 2.56d | 2016-06-09 10:30 A | 2016-06-13 17:00 A |  | 100% |  | 47.5h | 47.5h | 6,123.05 | 6,123.05 |
| 133 | 2.3.1.1.1 | Identificar procesos del sistema |  | 6h | 2016-06-09 10:30 A | 2016-06-09 18:30 A | 128 | 100% | Administrador de proyectos; Analista de datos | 12h | 12h | 1,544.7 | 1,544.7 |
| 134 | 2.3.1.1.2 | Identificar requerimientos funcionales |  | 6h | 2016-06-09 18:30 A | 2016-06-10 16:30 A | 133 | 100% | Administrador de proyectos; Analista de datos | 12h | 12h | 1,544.7 | 1,544.7 |
| 135 | 2.3.1.1.3 | Identificar requerimientos no funcionales |  | 4h | 2016-06-10 16:30 A | 2016-06-13 10:30 A | 134 | 100% | Administrador de proyectos; Analista de datos | 8h | 8h | 1,029.8 | 1,029.8 |
| 136 | 2.3.1.1.4 | **Especificación** |  | 0.75d | 2016-06-10 16:30 A | 2016-06-13 12:30 A |  | 100% |  | 12h | 12h | 1,544.7 | 1,544.7 |
| 137 | 2.3.1.1.4.1 | Evaluación de requerimientos |  | 1h | 2016-06-10 16:30 A | 2016-06-10 17:30 A | 135FS-4h | 100% | Administrador de proyectos; Analista de datos | 2h | 2h | 257.45 | 257.45 |
| 138 | 2.3.1.1.4.2 | SRS |  | 5h | 2016-06-10 17:30 A | 2016-06-13 12:30 A | 137 | 100% | Administrador de proyectos; Analista de datos | 10h | 10h | 1,287.25 | 1,287.25 |
| 139 | 2.3.1.1.5 | **Gestión de requerimientos** |  | 0.31d | 2016-06-13 12:30 A | 2016-06-13 17:00 A | 136FS-1h | 100% |  | 3.5h | 3.5h | 459.15 | 459.15 |
| 140 | 2.3.1.1.5.1 | Priorizar los requerimientos |  | 1h | 2016-06-13 12:30 A | 2016-06-13 15:30 A | 138 | 100% | Administrador de proyectos; Analista de datos | 2h | 2h | 257.45 | 257.45 |
| 141 | 2.3.1.1.5.2 | Almacenar en repositorio |  | 0.5h | 2016-06-13 15:30 A | 2016-06-13 16:00 A | 140 | 100% | Analista de datos | 0.5h | 0.5h | 55.75 | 55.75 |
| 142 | 2.3.1.1.5.3 | Asignar a desarrolladores de software |  | 1h | 2016-06-13 16:00 A | 2016-06-13 17:00 A | 141 | 100% | Administrador de proyectos | 1h | 1h | 145.95 | 145.95 |
| 143 | 2.3.1.1.5.4 | Entrega de procesos del sistema y SRS | milestone | 0d | 2016-06-13 17:00 A | 2016-06-13 17:00 A | 142 | 100% | Analista de datos |  |  |  |  |
| 144 | 2.3.2 | **Planificación** |  | 1.44d | 2016-06-13 17:00 A | 2016-06-15 10:30 A | 131FS-0.5h | 100% |  | 22h | 22h | 2,763.9 | 2,763.9 |
| 145 | 2.3.2.1 | Actualizar plan de proyecto |  | 1h | 2016-06-13 17:00 A | 2016-06-13 18:00 A | 143 | 100% | Administrador de proyectos | 1h | 1h | 145.95 | 145.95 |
| 146 | 2.3.2.2 | **Estimación** |  | 0.38d | 2016-06-13 18:00 A | 2016-06-14 11:00 A |  | 100% |  | 4h | 4h | 480.45 | 480.45 |
| 147 | 2.3.2.2.1 | Actualizar diccionario del WBS |  | 2h | 2016-06-13 18:00 A | 2016-06-14 10:00 A | 145 | 100% | Analista de datos | 2h | 2h | 223 | 223 |
| 148 | 2.3.2.2.2 | Actualizar costos |  | 1h | 2016-06-14 10:00 A | 2016-06-14 11:00 A | 147 | 100% | Administrador de proyectos; Analista de datos | 2h | 2h | 257.45 | 257.45 |
| 149 | 2.3.2.3 | **Riesgos** |  | 0.81d | 2016-06-14 11:00 A | 2016-06-15 09:30 A | 146FS-1h | 100% |  | 14h | 14h | 1,802.15 | 1,802.15 |
| 150 | 2.3.2.3.1 | Identificación de nuevos riesgos |  | 4h | 2016-06-14 11:00 A | 2016-06-14 17:00 A | 148 | 100% | Administrador de proyectos; Analista de datos | 8h | 8h | 1,029.8 | 1,029.8 |
| 151 | 2.3.2.3.2 | Asignación de prioridades |  | 1h | 2016-06-14 17:00 A | 2016-06-14 18:00 A | 150 | 100% | Administrador de proyectos; Analista de datos | 2h | 2h | 257.45 | 257.45 |
| 152 | 2.3.2.3.3 | Plan de mitigación y contingencia |  | 2h | 2016-06-14 17:30 A | 2016-06-15 09:30 A | 151FS-0.5h | 100% | Administrador de proyectos; Analista de datos | 4h | 4h | 514.9 | 514.9 |
| 153 | 2.3.2.4 | **Aseguramiento de la calidad** |  | 0.12d | 2016-06-15 09:30 A | 2016-06-15 10:30 A | 149 | 100% |  | 3h | 3h | 335.35 | 335.35 |
| 154 | 2.3.2.4.1 | Junta de arranque de construcción |  | 1h | 2016-06-15 09:30 A | 2016-06-15 10:30 A | 152 | 100% | Administrador de configuración; Administrador de proyectos; Asegurador de calidad | 3h | 3h | 335.35 | 335.35 |
| 155 | 2.3.2.4.2 | Entrega del nuevo plan del proyecto, actualización del WBS, nuevos riesgos, prioridades de los riesgos, nuevo plan de mitigación y contingencia y junta de arranque de construcción | milestone | 0d | 2016-06-15 09:30 A | 2016-06-15 09:30 A |  | 100% |  |  |  |  |  |

Notes:
- 133: Descripción: Se vuelven a identificar los nuevos procesos que deberá tener el sistema
- 134: Descripción: Se identifican los nuevos requerimientos funcionales o se modifican algunos si asi se ameritá
- 135: Descripción: Se identifican los nuevos requerimientos no funcionales o se modifican algunos si asi se ameritá
- 137: Descripción: Se evalúan los nuevos requerimientos
- 138: Descripción: Se actualiza el SRS
- 140: Descripción: Se priorizan los nuevos requerimientos
- 141: Descripción: Se realiza una copia de respaldo en el repositorio
- 142: Descripción: Se asignan los nuevos encargados de las tareas
- 145: Descripción: Se actualiza el nuevo plan del proyecto
- 147: Descripción: Se actualiza el diccionario WBS
- 148: Descripción: Se actualizan los costos
- 150: Descripción: Se identifican los nuevos riegos o se actualizan los que ya se tenían
- 151: Descripción: Se asignan prioridades a los nuevos riegos
- 152: Descripción: Se realiza un nuevo plan de mitigación y contingencia
- 154: Descripción: Se revisan de nuevo los productos necesarios para arrancar el sistema

| ID | WBS | Task | Type | Duration | Start | Finish | Predecessors | Complete | Resources | Work | Actual work | Cost | Actual cost |
| --- | --- | --- | --- | --- | --- | --- | --- | --- | --- | --- | --- | --- | --- |
| 156 | 2.3.3 | **Diseño** |  | 1.38d | 2016-06-15 10:30 A | 2016-06-16 15:30 A | 144 | 100% |  | 11h | 11h | 1,256.31 | 1,256.31 |
| 157 | 2.3.3.1 | Diagramas de caso de uso |  | 3h | 2016-06-15 10:30 A | 2016-06-15 15:30 A | 154 | 100% | Diseñador | 3h | 3h | 342.63 | 342.63 |
| 158 | 2.3.3.2 | Diagramas de secuencia |  | 1h | 2016-06-15 15:30 A | 2016-06-15 16:30 A | 157 | 100% | Diseñador | 1h | 1h | 114.21 | 114.21 |
| 159 | 2.3.3.3 | Actualizar diagramas de componentes |  | 1h | 2016-06-15 16:30 A | 2016-06-15 17:30 A | 158 | 100% | Diseñador | 1h | 1h | 114.21 | 114.21 |
| 160 | 2.3.3.4 | Diagramas de despliegues |  | 1h | 2016-06-15 17:30 A | 2016-06-15 18:30 A | 159 | 100% | Diseñador | 1h | 1h | 114.21 | 114.21 |
| 161 | 2.3.3.5 | Mapa de navegación |  | 1h | 2016-06-15 18:30 A | 2016-06-16 09:30 A | 160 | 100% | Diseñador | 1h | 1h | 114.21 | 114.21 |
| 162 | 2.3.3.6 | Maquetación |  | 4h | 2016-06-16 09:30 A | 2016-06-16 15:30 A | 161 | 100% | Diseñador | 4h | 4h | 456.84 | 456.84 |
| 163 | 2.3.3.7 | Entrega de nuevos casos de uso, de secuencia, componentes, despliegues del mapa de navegación y de la maquetación | milestone | 0d | 2016-06-15 10:30 A | 2016-06-15 10:30 A |  | 100% |  |  |  |  |  |
| 164 | 2.3.4 | **Codificación** |  | 5.94d | 2016-06-16 15:30 A | 2016-06-24 13:00 A | 156 | 100% |  | 47.5h | 47.5h | 4,497.3 | 4,497.3 |
| 165 | 2.3.4.1 | **Módulo dirección** |  | 1.19d | 2016-06-16 15:30 A | 2016-06-17 17:00 A |  | 100% |  | 9.5h | 9.5h | 899.46 | 899.46 |
| 166 | 2.3.4.1.1 | Interfaz |  | 1h | 2016-06-16 15:30 A | 2016-06-16 16:30 A | 162 | 100% | Programador | 1h | 1h | 94.68 | 94.68 |
| 167 | 2.3.4.1.2 | Clases de dirección |  | 1h | 2016-06-16 16:30 A | 2016-06-16 17:30 A | 166 | 100% | Programador | 1h | 1h | 94.68 | 94.68 |
| 168 | 2.3.4.1.3 | Conexión a BD |  | 0.5h | 2016-06-16 17:30 A | 2016-06-16 18:00 A | 167 | 100% | Programador | 0.5h | 0.5h | 47.34 | 47.34 |
| 169 | 2.3.4.1.4 | Alta de dirección |  | 1.5h | 2016-06-16 18:00 A | 2016-06-17 09:30 A | 168 | 100% | Programador | 1.5h | 1.5h | 142.02 | 142.02 |
| 170 | 2.3.4.1.5 | Baja de dirección |  | 1.5h | 2016-06-17 09:30 A | 2016-06-17 11:00 A | 169 | 100% | Programador | 1.5h | 1.5h | 142.02 | 142.02 |
| 171 | 2.3.4.1.6 | Actualización de dirección |  | 2h | 2016-06-17 11:00 A | 2016-06-17 13:00 A | 170 | 100% | Programador | 2h | 2h | 189.36 | 189.36 |
| 172 | 2.3.4.1.7 | Consultas de dirección |  | 1h | 2016-06-17 15:00 A | 2016-06-17 16:00 A | 171 | 100% | Programador | 1h | 1h | 94.68 | 94.68 |
| 173 | 2.3.4.1.8 | Reportes de dirección |  | 1h | 2016-06-17 16:00 A | 2016-06-17 17:00 A | 172 | 100% | Programador | 1h | 1h | 94.68 | 94.68 |
| 174 | 2.3.4.2 | **Módulo deudascobrar** |  | 1.19d | 2016-06-17 17:00 A | 2016-06-20 18:30 A | 165 | 100% |  | 9.5h | 9.5h | 899.46 | 899.46 |
| 175 | 2.3.4.2.1 | Interfaz |  | 1h | 2016-06-17 17:00 A | 2016-06-17 18:00 A | 173 | 100% | Programador | 1h | 1h | 94.68 | 94.68 |
| 176 | 2.3.4.2.2 | Clases de deudascobrar |  | 1h | 2016-06-17 18:00 A | 2016-06-17 19:00 A | 175 | 100% | Programador | 1h | 1h | 94.68 | 94.68 |
| 177 | 2.3.4.2.3 | Conexión a BD |  | 0.5h | 2016-06-20 09:00 A | 2016-06-20 09:30 A | 176 | 100% | Programador | 0.5h | 0.5h | 47.34 | 47.34 |
| 178 | 2.3.4.2.4 | Alta de deudascobrar |  | 1.5h | 2016-06-20 09:30 A | 2016-06-20 11:00 A | 177 | 100% | Programador | 1.5h | 1.5h | 142.02 | 142.02 |
| 179 | 2.3.4.2.5 | Baja de deudascobrar |  | 1.5h | 2016-06-20 11:00 A | 2016-06-20 12:30 A | 178 | 100% | Programador | 1.5h | 1.5h | 142.02 | 142.02 |
| 180 | 2.3.4.2.6 | Actualización de deudascobrar |  | 2h | 2016-06-20 12:30 A | 2016-06-20 16:30 A | 179 | 100% | Programador | 2h | 2h | 189.36 | 189.36 |
| 181 | 2.3.4.2.7 | Consultas de deudascobrar |  | 1h | 2016-06-20 16:30 A | 2016-06-20 17:30 A | 180 | 100% | Programador | 1h | 1h | 94.68 | 94.68 |
| 182 | 2.3.4.2.8 | Reportes de deudascobrar |  | 1h | 2016-06-20 17:30 A | 2016-06-20 18:30 A | 181 | 100% | Programador | 1h | 1h | 94.68 | 94.68 |

Notes:
- 157: Descripción: Se elaboran los nuevos casos de uso
- 158: Descripción: Se elaboran los nuevos diagrmas de secuencia
- 159: Descripción: Se actualiza el diagrama de componentes
- 160: Descripción: Se elabora el neuvo diagrama de despliegues
- 161: Descripción: Se elabora el nuevo mapa de navegación
- 162: Descripción: Se realiza al nueva maquetación
- 166: Descripción: Se realiza la interfaz del módulo de dirección
- 167: Descripción: Se realizan las clases de dirección
- 168: Descripción: Se realiza la conexión a la base de datos
- 169: Descripción: Se realiza la codificación del alta de la tabla dirección
- 170: Descripción: Se realiza la codificación de la baja de dirección
- 171: Descripción: Se realiza la codificación de la actualización de la tabla dirección
- 172: Descripción: Se realizan las consultas correspondientes a la tabla dirección
- 173: Descripción: Se realiza el reporte de la tabla dirección
- 175: Descripción: Se realiza la interfaz del módulo de deudascobrar
- 176: Descripción: Se realizan las clases de los deudascobrar
- 177: Descripción: Se realiza la conexión a la base de datos
- 178: Descripción: Se realiza la codificación del alta de deudascobrar
- 179: Descripción: Se realiza la codificación de la baja de deudascobrar
- 180: Descripción: Se realiza la codificación de la actualización de la tabla deudascobrar
- 181: Descripción: Se realizan las consultas correspondientes a la tabla deudascobrar
- 182: Descripción: Se realiza el reporte de la tabla deudascobrar

| ID | WBS | Task | Type | Duration | Start | Finish | Predecessors | Complete | Resources | Work | Actual work | Cost | Actual cost |
| --- | --- | --- | --- | --- | --- | --- | --- | --- | --- | --- | --- | --- | --- |
| 183 | 2.3.4.3 | **Módulo deudaspagar** |  | 1.19d | 2016-06-20 18:30 A | 2016-06-22 10:00 A | 174 | 100% |  | 9.5h | 9.5h | 899.46 | 899.46 |
| 184 | 2.3.4.3.1 | Interfaz |  | 1h | 2016-06-20 18:30 A | 2016-06-21 09:30 A | 182 | 100% | Programador | 1h | 1h | 94.68 | 94.68 |
| 185 | 2.3.4.3.2 | Clases de deudaspagar |  | 1h | 2016-06-21 09:30 A | 2016-06-21 10:30 A | 184 | 100% | Programador | 1h | 1h | 94.68 | 94.68 |
| 186 | 2.3.4.3.3 | Conexión a BD |  | 0.5h | 2016-06-21 10:30 A | 2016-06-21 11:00 A | 185 | 100% | Programador | 0.5h | 0.5h | 47.34 | 47.34 |
| 187 | 2.3.4.3.4 | Alta de deudaspagar |  | 1.5h | 2016-06-21 11:00 A | 2016-06-21 12:30 A | 186 | 100% | Programador | 1.5h | 1.5h | 142.02 | 142.02 |
| 188 | 2.3.4.3.5 | Baja de deudaspagar |  | 1.5h | 2016-06-21 12:30 A | 2016-06-21 16:00 A | 187 | 100% | Programador | 1.5h | 1.5h | 142.02 | 142.02 |
| 189 | 2.3.4.3.6 | Actualización de deudaspagar |  | 2h | 2016-06-21 16:00 A | 2016-06-21 18:00 A | 188 | 100% | Programador | 2h | 2h | 189.36 | 189.36 |
| 190 | 2.3.4.3.7 | Consultas de deudaspagar |  | 1h | 2016-06-21 18:00 A | 2016-06-21 19:00 A | 189 | 100% | Programador | 1h | 1h | 94.68 | 94.68 |
| 191 | 2.3.4.3.8 | Reportes de deudaspagar |  | 1h | 2016-06-22 09:00 A | 2016-06-22 10:00 A | 190 | 100% | Programador | 1h | 1h | 94.68 | 94.68 |
| 192 | 2.3.4.4 | **Módulo abonoclientes** |  | 1.19d | 2016-06-22 10:00 A | 2016-06-23 11:30 A | 183 | 100% |  | 9.5h | 9.5h | 899.46 | 899.46 |
| 193 | 2.3.4.4.1 | Interfaz |  | 1h | 2016-06-22 10:00 A | 2016-06-22 11:00 A | 191 | 100% | Programador | 1h | 1h | 94.68 | 94.68 |
| 194 | 2.3.4.4.2 | Clases de abonoclientes |  | 1h | 2016-06-22 11:00 A | 2016-06-22 12:00 A | 193 | 100% | Programador | 1h | 1h | 94.68 | 94.68 |
| 195 | 2.3.4.4.3 | Conexión a BD |  | 0.5h | 2016-06-22 12:00 A | 2016-06-22 12:30 A | 194 | 100% | Programador | 0.5h | 0.5h | 47.34 | 47.34 |
| 196 | 2.3.4.4.4 | Alta de abonoclientes |  | 1.5h | 2016-06-22 12:30 A | 2016-06-22 16:00 A | 195 | 100% | Programador | 1.5h | 1.5h | 142.02 | 142.02 |
| 197 | 2.3.4.4.5 | Baja de abonoclientes |  | 1.5h | 2016-06-22 16:00 A | 2016-06-22 17:30 A | 196 | 100% | Programador | 1.5h | 1.5h | 142.02 | 142.02 |
| 198 | 2.3.4.4.6 | Actualización de abonoclientes |  | 2h | 2016-06-22 17:30 A | 2016-06-23 09:30 A | 197 | 100% | Programador | 2h | 2h | 189.36 | 189.36 |
| 199 | 2.3.4.4.7 | Consultas de abonoclientes |  | 1h | 2016-06-23 09:30 A | 2016-06-23 10:30 A | 198 | 100% | Programador | 1h | 1h | 94.68 | 94.68 |
| 200 | 2.3.4.4.8 | Reportes de abonoclientes |  | 1h | 2016-06-23 10:30 A | 2016-06-23 11:30 A | 199 | 100% | Programador | 1h | 1h | 94.68 | 94.68 |
| 201 | 2.3.4.5 | **Módulo abonoproveedores** |  | 1.19d | 2016-06-23 11:30 A | 2016-06-24 13:00 A | 192 | 100% |  | 9.5h | 9.5h | 899.46 | 899.46 |
| 202 | 2.3.4.5.1 | Interfaz |  | 1h | 2016-06-23 11:30 A | 2016-06-23 12:30 A | 200 | 100% | Programador | 1h | 1h | 94.68 | 94.68 |
| 203 | 2.3.4.5.2 | Clases de abonoproveedores |  | 1h | 2016-06-23 12:30 A | 2016-06-23 15:30 A | 202 | 100% | Programador | 1h | 1h | 94.68 | 94.68 |
| 204 | 2.3.4.5.3 | Conexión a BD |  | 0.5h | 2016-06-23 15:30 A | 2016-06-23 16:00 A | 203 | 100% | Programador | 0.5h | 0.5h | 47.34 | 47.34 |
| 205 | 2.3.4.5.4 | Alta de abonoproveedores |  | 1.5h | 2016-06-23 16:00 A | 2016-06-23 17:30 A | 204 | 100% | Programador | 1.5h | 1.5h | 142.02 | 142.02 |
| 206 | 2.3.4.5.5 | Baja de abonoproveedores |  | 1.5h | 2016-06-23 17:30 A | 2016-06-23 19:00 A | 205 | 100% | Programador | 1.5h | 1.5h | 142.02 | 142.02 |
| 207 | 2.3.4.5.6 | Actualización de abonoproveedores |  | 2h | 2016-06-24 09:00 A | 2016-06-24 11:00 A | 206 | 100% | Programador | 2h | 2h | 189.36 | 189.36 |
| 208 | 2.3.4.5.7 | Consultas de abonoproveedores |  | 1h | 2016-06-24 11:00 A | 2016-06-24 12:00 A | 207 | 100% | Programador | 1h | 1h | 94.68 | 94.68 |
| 209 | 2.3.4.5.8 | Reportes de abonoproveedores |  | 1h | 2016-06-24 12:00 A | 2016-06-24 13:00 A | 208 | 100% | Programador | 1h | 1h | 94.68 | 94.68 |
| 210 | 2.3.4.5.9 | Entrega de reporte de módulo dirección, deudaspagar, deudascobrar, abonoclientes y abonoproveedores. | milestone | 0d | 2016-06-23 11:30 A | 2016-06-23 11:30 A |  | 100% |  |  |  |  |  |

Notes:
- 184: Descripción: Se realiza la interfaz del módulo de deudaspagar
- 185: Descripción: Se realizan las clases de la tabla deudaspagar
- 186: Descripción: Se realiza la conexión a la base de datos
- 187: Descripción: Se realiza la codificación del alta de deudaspagar
- 188: Descripción: Se realiza la codificación de la baja de deudaspagar
- 189: Descripción: Se realiza la codificación de la actualización de la tabla deudaspagar
- 190: Descripción: Se realizan las consultas correspondientes a la tabla deudaspagar
- 191: Descripción: Se realiza el reporte de la tabla deudaspagar
- 193: Descripción: Se realiza la interfaz del módulo de abonoclientes
- 194: Descripción: Se realizan las clases de la tabla abonoclientes
- 195: Descripción: Se realiza la conexión a la base de datos
- 196: Descripción: Se realiza la codificación del alta de abonoclientes
- 197: Descripción: Se realiza la codificación de la baja de abonoclientes
- 198: Descripción: Se realiza la codificación de la actualización de la tabla abonoclientes
- 199: Descripción: Se realizan las consultas correspondientes a la tabla abonoclientes
- 200: Descripción: Se realiza el reporte de la tabla abonoclientes
- 202: Descripción: Se realiza la interfaz del módulo de abonoproveedores
- 203: Descripción: Se realizan las clases de los abonoproveedores
- 204: Descripción: Se realiza la conexión a la base de datos
- 205: Descripción: Se realiza la codificación del alta de abonoproveedores
- 206: Descripción: Se realiza la codificación de la baja de abonoproveedores
- 207: Descripción: Se realiza la codificación de la actualización de la tabla abonoproveedores
- 208: Descripción: Se realizan las consultas correspondientes a la tabla abonoproveedores
- 209: Descripción: Se realiza el reporte de la tabla abonoproveedores

| ID | WBS | Task | Type | Duration | Start | Finish | Predecessors | Complete | Remaining | Total slack | Resources | Work | Actual work | Cost | Actual cost |
| --- | --- | --- | --- | --- | --- | --- | --- | --- | --- | --- | --- | --- | --- | --- | --- |
| 211 | 2.3.5 | **Pruebas** |  | 4.75d | 2016-06-24 13:00 A | 2016-07-01 11:00 A | 164 | 100% |  |  |  | 38h | 38h | 4,158.72 | 4,158.72 |
| 212 | 2.3.5.1 | **Pruebas de caja blanca** |  | 4.75d | 2016-06-24 13:00 A | 2016-07-01 11:00 A |  | 100% |  |  |  | 38h | 38h | 4,158.72 | 4,158.72 |
| 213 | 2.3.5.1.1 | **Modulo de usuarios** |  | 1d | 2016-06-24 15:00 A | 2016-06-27 13:00 A |  | 100% |  |  |  | 8h | 8h | 875.52 | 875.52 |
| 214 | 2.3.5.1.1.1 | Puebas unitarias |  | 4h | 2016-06-24 15:00 A | 2016-06-24 19:00 A | 209 | 100% |  |  | Tester | 4h | 4h | 437.76 | 437.76 |
| 215 | 2.3.5.1.1.2 | Pruebas de modulo |  | 4h | 2016-06-27 09:00 A | 2016-06-27 13:00 A | 214 | 100% |  |  | Tester | 4h | 4h | 437.76 | 437.76 |
| 216 | 2.3.5.1.2 | **Modulo de productos** |  | 0.88d | 2016-06-27 15:00 A | 2016-06-28 12:00 A | 213 | 100% |  |  |  | 7h | 7h | 766.08 | 766.08 |
| 217 | 2.3.5.1.2.1 | Pruebas de desempeño |  | 4h | 2016-06-27 15:00 A | 2016-06-27 19:00 A | 215 | 100% |  |  | Tester | 4h | 4h | 437.76 | 437.76 |
| 218 | 2.3.5.1.2.2 | Pruebas de regresion |  | 3h | 2016-06-28 09:00 A | 2016-06-28 12:00 A | 217 | 100% |  |  | Tester | 3h | 3h | 328.32 | 328.32 |
| 219 | 2.3.5.1.3 | **Módulo deudaspagar** |  | 0.5d | 2016-06-28 12:00 A | 2016-06-28 18:00 A | 216 | 100% |  |  |  | 4h | 4h | 437.76 | 437.76 |
| 220 | 2.3.5.1.3.1 | Pruebas de módulo |  | 4h | 2016-06-28 12:00 A | 2016-06-28 18:00 A | 218 | 100% |  |  | Tester | 4h | 4h | 437.76 | 437.76 |
| 221 | 2.3.5.1.4 | **Módulo abonoclientes** |  | 0.5d | 2016-06-28 18:00 A | 2016-06-29 12:00 A | 219 | 100% |  |  |  | 4h | 4h | 437.76 | 437.76 |
| 222 | 2.3.5.1.4.1 | Pruebas de desempeño |  | 4h | 2016-06-28 18:00 A | 2016-06-29 12:00 A | 220 | 100% |  |  | Tester | 4h | 4h | 437.76 | 437.76 |
| 223 | 2.3.5.1.5 | **Módulo abonoproveedores** |  | 0.88d | 2016-06-29 12:00 A | 2016-06-30 11:00 A | 221 | 100% |  |  |  | 7h | 7h | 766.08 | 766.08 |
| 224 | 2.3.5.1.5.1 | Pruebas de stress |  | 4h | 2016-06-29 12:00 A | 2016-06-29 18:00 A | 222 | 100% |  |  | Tester | 4h | 4h | 437.76 | 437.76 |
| 225 | 2.3.5.1.5.2 | Pruebas de carga |  | 3h | 2016-06-29 18:00 A | 2016-06-30 11:00 A | 224 | 100% |  |  | Tester | 3h | 3h | 328.32 | 328.32 |
| 226 | 2.3.5.1.6 | Pruebas del sistema |  | 8h | 2016-06-30 11:00 A | 2016-07-01 11:00 A | 223 | 100% |  |  | Tester | 8h | 8h | 875.52 | 875.52 |
| 227 | 2.3.5.1.7 | Entrega de resultados de pruebas de módulo de dirección, deudaspagar, deudascobrar, abonoclientes y abonoproveedores. | milestone | 0d | 2016-06-24 13:00 A | 2016-06-24 13:00 A |  | 100% |  |  |  |  |  |  |  |
| 228 | 2.4 | **Implementación** |  | 2.25d | 2016-07-01 11:00 A | 2016-07-05 13:00 | 130 | 38% | 1.39d | 0d |  | 25h | 8h | 2,426.04 | 757.44 |
| 229 | 2.4.1 | Evaluación del hosting |  | 2h | 2016-07-01 11:00 A | 2016-07-01 13:00 A | 226 | 100% |  |  | Programador | 2h | 2h | 189.36 | 189.36 |
| 230 | 2.4.2 | Implementar el sitio en el hosting |  | 8h | 2016-07-01 15:00 A | 2016-07-04 13:00 | 229 | 75% | 2h | 0d | Programador | 8h | 6h | 757.44 | 568.08 |
| 231 | 2.4.3 | Manual de usuario |  | 5h | 2016-07-04 15:00 | 2016-07-05 10:00 | 230 |  |  | 0d | Programador | 5h |  | 473.4 |  |
| 232 | 2.4.4 | Capacitación |  | 2h | 2016-07-04 17:00 | 2016-07-04 19:00 | 231FS-3h |  |  | 0d | Programador | 2h |  | 189.36 |  |
| 233 | 2.4.5 | **Pruebas de caja blanca** |  | 2.25d | 2016-07-01 11:00 | 2016-07-05 13:00 |  |  |  | 0d |  | 8h |  | 816.48 |  |
| 234 | 2.4.5.1 | Pruebas de rendimiento |  | 2h | 2016-07-05 09:00 | 2016-07-05 11:00 | 232 |  |  | 0d | Programador; Tester | 4h |  | 408.24 |  |
| 235 | 2.4.5.2 | Pruebas de sistema |  | 2h | 2016-07-05 11:00 | 2016-07-05 13:00 | 234 |  |  | 0d | Programador; Tester | 4h |  | 408.24 |  |
| 236 | 2.4.5.3 | Entrega del manual de usuario | milestone | 0d | 2016-07-01 11:00 | 2016-07-01 11:00 |  |  |  | 2.25d | Administrador de proyectos |  |  |  |  |

Notes:
- 214: Descripción: Realización de las pruebas unitarias al módulo de usuarios
- 215: Descripción: Realización de las pruebas de módulo a la tabla usuarios
- 217: Descripción: Realización de las pruebas de desempeño al módulo productos
- 218: Descripción: Realización de las pruebas de regresión al módulo de productos
- 220: Descripción: Realización de las pruebas de módulo a la tabla deudaspagar
- 222: Descripción: Realización de las pruebas de desempeño al módulo abonoclientes
- 224: Descripción: Realización de las pruebas de stress al modulo de abonoproveedores
- 225: Descripción: Realización de las pruebas de carga al módulo de abonoproveedores
- 226: Descripción: Realización de las pruebas de sistema al los módulos anteriores en conjunto
- 229: Descripción: Se evalúa el hosting al cual se subirá la aplicación web
- 230: Descripción: Se implementa la apl.icación web en el hosting seleccionado
- 231: Descripción: Se elabora el manual de usuario
- 232: Descripción: Se otorga capacitación a la empresa cliente
- 234: Descripción: Se realizan pruebas de rendimiento a la aplicación web ye en el hosting para comprobar que todo funcione correctamente
- 235: Descripción: Se realiza las pruebas de sistema a la aplicación web para corroborar que en efecto funciona bien ya implementado en el hosting

| ID | WBS | Task | Type | Duration | Start | Finish | Predecessors | Total slack | Resources | Work | Cost |
| --- | --- | --- | --- | --- | --- | --- | --- | --- | --- | --- | --- |
| 237 | 2.5 | **Cierre del proyecto** |  | 1d | 2016-07-05 13:00 | 2016-07-06 13:00 | 228 | 0d |  | 21h | 2,269.75 |
| 238 | 2.5.1 | Carta de aceptación |  | 1h | 2016-07-05 15:00 | 2016-07-05 16:00 | 235 | 0d | Administrador de proyectos; cliente | 2h | 145.95 |
| 239 | 2.5.2 | Acta de cierre del proyecto |  | 1h | 2016-07-05 16:00 | 2016-07-05 17:00 | 238 | 0d | Administrador de proyectos; cliente | 2h | 145.95 |
| 240 | 2.5.3 | Evaluación de desempeño |  | 2h | 2016-07-05 17:00 | 2016-07-05 19:00 | 239 | 0d | Administrador de configuración; Administrador de proyectos; Asegurador de calidad | 6h | 670.7 |
| 241 | 2.5.4 | Junta de lecciones aprendidas |  | 1h | 2016-07-06 09:00 | 2016-07-06 10:00 | 240 | 0d | Administrador de configuración; Administrador de proyectos; Analista de datos; Asegurador de calidad; Diseñador; Programador; Tester | 7h | 765.18 |
| 242 | 2.5.5 | Revisión de adherencias de procesos |  | 1h | 2016-07-06 10:00 | 2016-07-06 11:00 | 241 | 0d | Administrador de proyectos; Asegurador de calidad | 2h | 250.07 |
| 243 | 2.5.6 | Liberación de los recursos |  | 1h | 2016-07-06 11:00 | 2016-07-06 12:00 | 242 | 0d | Administrador de proyectos | 1h | 145.95 |
| 244 | 2.5.7 | Informe final |  | 1h | 2016-07-06 12:00 | 2016-07-06 13:00 | 243 | 0d | Administrador de proyectos | 1h | 145.95 |
| 245 | 2.5.8 | Entrega de carta de aceptación, acta de cierre del proyecto, evaluación de desempeño, junta de lecciones aprendidas, adherencia de procesos e informe final. | milestone | 0d | 2016-07-05 13:00 | 2016-07-05 13:00 |  | 1d |  |  |  |

Notes:
- 238: Descripción: Se redacta la carta de aceptación de que el cliente esta de acuerdo con el producto que se esta entregando
- 239: Descripción: Se firma el acta de que el proyecto se termino en tiempo y forma
- 240: Descripción: Se realiza una evaluación de desempeño para observar como fue realizado el proyecto
- 241: Descripción: Se retroalimenta a los integrantes del equipo sobre lo realizado en el proyecto
- 242: Descripción: Se realiza una revisión sobre como fue que funcionaron los procesos
- 243: Descripción: Se hace al liberación de los recursos utilizados en la realización del proyecto
- 244: Descripción: Se realiza el informe final sobre la realización del proyecto
